Schedule from MS Project, 2023-02-06 to 2023-12-20.

## Calendars

- Standard: Mon-Fri 08:00-12:00, 13:00-17:00; Sat-Sun off.

## Resources

| Resource |
| --- |
| Project Manager 1 |
| Project Manager 2 |
| Project Manager 3 |
| Requirement Engineer1 |
| Requirement Engineers 2 |
| Requirement Engineers 3 |
| Requirement Engineers 7 |
| Requirement Engineers 8 |
| Requirement Engineers 9 |
| Requirement Engineers 10 |
| Requirement Engineers 13 |
| Requirement Engineers 14 |
| Requirement Engineers 15 |
| System Engineer 9 |
| System Engineer 11 |
| System Engineer 12 |
| System Engineer 13 |
| System Engineer 14 |
| System Engineer 15 |
| System Engineer 16 |
| Programmer 1 |
| Programmer 3 |
| Programmer 4 |
| Programmer 5 |
| Programmer 6 |
| Programmer 23 |
| Programmer 24 |
| Programmer 25 |
| Programmer 26 |
| Programmer 22 |
| Test Engineer 2 |
| Test Engineer 3 |
| Test Engineer 7 |
| Test Engineer 8 |
| Test Engineer 14 |
| Test Engineer 15 |
| Test Engineer 16 |
| Test Engineer 27 |
| Test Engineer 48 |
| Test Engineer 49 |
| Documentation Engineer 7 |
| Documentation Engineer 8 |
| Documentation Engineer 13 |
| Documentation Engineer 14 |
| Documentation Engineer 43 |
| Documentation Engineer 44 |
| Documentation Engineer 45 |
| Requirement Engineers |

## Schedule

| ID | WBS | Task | Duration | Start | Finish | Predecessors | Total slack | Free slack | Resources | Work |
| --- | --- | --- | --- | --- | --- | --- | --- | --- | --- | --- |
| 1 | 1 | **Peoject 1** | 227.28d | 2023-02-06 | 2023-12-20 |  | 0d |  |  | 1874.59h |
| 2 | 1.1 | **Project Plan** | 5.43d | 2023-02-06 | 2023-02-13 |  | 217.75d |  |  | 22.21h |
| 3 | 1.1.1 | Write Plan | 3.25d | 2023-02-06 | 2023-02-09 |  | 217.75d | 0d | Project Manager 1 [20%] | 5.2h |
| 4 | 1.1.2 | **Review Plan** | 1.95d | 2023-02-09 | 2023-02-13 |  | 217.75d |  |  | 16.64h |
| 5 | 1.1.2.1 | Preparation for review | 1.3d | 2023-02-09 | 2023-02-10 | 3 | 217.75d | 0d | Requirement Engineer1 [20%]; System Engineer 9 [20%]; Test Engineer 2 [20%]; Documentation Engineer 7 [20%]; Programmer 1 [20%] | 10.4h |
| 6 | 1.1.2.2 | Review Meeting | 0.65d | 2023-02-10 | 2023-02-13 | 5 | 217.75d | 0d | Documentation Engineer 7 [20%]; Programmer 1 [20%]; Project Manager 1 [20%]; Requirement Engineer1 [20%]; System Engineer 9 [20%]; Test Engineer 2 [20%] | 6.24h |
| 7 | 1.1.3 | Rework | 0.23d | 2023-02-13 | 2023-02-13 | 6 | 217.75d | 0d | Project Manager 1 [20%] | 0.37h |
| 8 | 1.2 | **Risk Mitigation and Contingency Plan** | 4.1d | 2023-02-13 | 2023-02-17 |  | 217.75d |  |  | 14.53h |
| 9 | 1.2.1 | Write Plan | 1.93d | 2023-02-13 | 2023-02-15 | 7 | 217.75d | 0d | Project Manager 1 [20%] | 3.09h |
| 10 | 1.2.2 | **Review Plan** | 1.15d | 2023-02-15 | 2023-02-16 |  | 217.75d |  |  | 9.81h |
| 11 | 1.2.2.1 | Preparation for review | 0.77d | 2023-02-15 | 2023-02-16 | 9 | 217.75d | 0d | Documentation Engineer 7 [20%]; Programmer 1 [20%]; Requirement Engineer1 [20%]; System Engineer 9 [20%]; Test Engineer 2 [20%] | 6.16h |
| 12 | 1.2.2.2 | Review Meeting | 0.38d | 2023-02-16 | 2023-02-16 | 11 | 217.75d | 0d | Documentation Engineer 7 [20%]; Programmer 1 [20%]; Project Manager 1 [20%]; Requirement Engineer1 [20%]; System Engineer 9 [20%]; Test Engineer 2 [20%] | 3.65h |
| 13 | 1.2.3 | Rework | 1.02d | 2023-02-16 | 2023-02-17 | 12 | 217.75d |  | Project Manager 1 [20%] | 1.63h |
| 14 | 1.3 | **Requirement** | 18.99d | 2023-02-06 | 2023-03-02 |  | 0d |  |  | 141.5h |
| 15 | 1.3.1 | Write requirements | 1.82d | 2023-02-06 | 2023-02-07 |  | 0d |  | Requirement Engineers 2 [20%]; Requirement Engineers 7 [20%]; Requirement Engineers 8 [20%]; Requirement Engineers 3 [20%] | 11.65h |
| 16 | 1.3.2 | Write Use Case Model | 4.93d | 2023-02-07 | 2023-02-14 | 15 | 0d |  | Requirement Engineers 3 [20%]; Requirement Engineers 7 [20%]; Requirement Engineers 8 [20%]; Requirement Engineers 9 [20%] | 31.55h |
| 17 | 1.3.3 | **Review Requirements/ Use Case Model** | 15.76d | 2023-02-07 | 2023-03-01 |  | 4.93d |  |  | 93.79h |
| 18 | 1.3.3.1 | Preparation for review- requirement | 0.58d | 2023-02-07 | 2023-02-08 | 15 | 222.48d | 0d | Documentation Engineer 8 [20%]; Programmer 3 [20%]; System Engineer 11 [20%]; Test Engineer 3 [20%] | 3.71h |
| 19 | 1.3.3.2 | Preparation for review- Use case | 9.85d | 2023-02-14 | 2023-02-28 | 16 | 0d |  | Documentation Engineer 8 [20%]; Programmer 3 [20%]; System Engineer 11 [20%]; Test Engineer 3 [20%] | 63.04h |
| 20 | 1.3.3.3 | Review Meeting - requirement | 2.4d | 2023-02-08 | 2023-02-10 | 18 | 222.48d |  | Documentation Engineer 8 [20%]; Programmer 3 [20%]; Requirement Engineers 2 [20%]; System Engineer 11 [20%]; Test Engineer 3 [20%] | 19.2h |
| 21 | 1.3.3.4 | Review Meeting - use case | 0.98d | 2023-02-28 | 2023-03-01 | 19 | 0d |  | Documentation Engineer 8 [20%]; Programmer 3 [20%]; System Engineer 11 [20%]; Test Engineer 3 [20%]; Requirement Engineers 7 [20%] | 7.84h |
| 22 | 1.3.4 | Rework | 1.41d | 2023-03-01 | 2023-03-02 | 21 | 0d |  | Requirement Engineers 3 [20%]; Requirement Engineers 7 [20%] | 4.51h |
| 23 | 1.4 | **Analysis** | 7.62d | 2023-03-02 | 2023-03-14 |  | 0d |  |  | 44.1h |
| 24 | 1.4.1 | Write Analysis Document | 1.76d | 2023-03-02 | 2023-03-06 | 22 | 0d |  | System Engineer 11 [20%]; System Engineer 9 [20%] | 5.63h |

| ID | WBS | Task | Duration | Start | Finish | Predecessors | Total slack | Resources | Work |
| --- | --- | --- | --- | --- | --- | --- | --- | --- | --- |
| 25 | 1.4.2 | **Review Analysis Document** | 5.28d | 2023-03-06 | 2023-03-14 |  | 0d |  | 36.61h |
| 26 | 1.4.2.1 | Preparation for Analysis Document | 3.52d | 2023-03-06 | 2023-03-10 | 24 | 0d | Documentation Engineer 7 [20%]; Programmer 1 [20%]; Requirement Engineer1 [20%]; Test Engineer 49 [20%] | 22.53h |
| 27 | 1.4.2.2 | Review Meeting | 1.76d | 2023-03-10 | 2023-03-14 | 26 | 0d | Documentation Engineer 7 [20%]; Programmer 1 [20%]; Requirement Engineer1 [20%]; System Engineer 11 [20%]; Test Engineer 49 [20%] | 14.08h |
| 28 | 1.4.3 | Rework | 0.58d | 2023-03-14 | 2023-03-14 | 27 | 0d | System Engineer 9 [20%]; System Engineer 11 [20%] | 1.86h |
| 29 | 1.5 | **Design** | 30.31d | 2023-03-14 | 2023-04-25 |  | 0d |  | 148.11h |
| 30 | 1.5.1 | Write DD | 3.93d | 2023-03-14 | 2023-03-20 | 28 | 0d | System Engineer 9 [20%]; System Engineer 11 [20%] | 12.58h |
| 31 | 1.5.2 | **Review DD** | 7.67d | 2023-03-20 | 2023-03-30 |  | 0d |  | 53.81h |
| 32 | 1.5.2.1 | Preparation for DD | 4.72d | 2023-03-20 | 2023-03-27 | 30 | 0d | Documentation Engineer 7 [20%]; Programmer 1 [20%]; Requirement Engineers 10 [20%]; Test Engineer 15 [20%] | 30.21h |
| 33 | 1.5.2.2 | Review Meeting | 2.95d | 2023-03-27 | 2023-03-30 | 32 | 0d | Documentation Engineer 7 [20%]; Programmer 1 [20%]; System Engineer 11 [20%]; Requirement Engineers 10 [20%]; Test Engineer 15 [20%] | 23.6h |
| 34 | 1.5.3 | Rework | 8.35d | 2023-03-30 | 2023-04-11 | 33 | 0d | System Engineer 9 [20%]; System Engineer 11 [20%] | 26.72h |
| 35 | 1.5.4 | Write Data Model (DM) | 7.5d | 2023-04-11 | 2023-04-21 | 34 | 0d | System Engineer 14 [20%]; System Engineer 15 [20%]; System Engineer 16 [20%] | 36h |
| 36 | 1.5.5 | **Review DM** | 2.4d | 2023-04-21 | 2023-04-25 |  | 0d |  | 16.8h |
| 37 | 1.5.5.1 | Preparation for DM | 1.5d | 2023-04-21 | 2023-04-24 | 35 | 0d | Documentation Engineer 7 [20%]; Programmer 1 [20%]; Requirement Engineer1 [20%]; Test Engineer 2 [20%] | 9.6h |
| 38 | 1.5.5.2 | Review Meeting | 0.9d | 2023-04-24 | 2023-04-25 | 37 | 0d | Documentation Engineer 7 [20%]; Programmer 1 [20%]; Requirement Engineer1 [20%]; System Engineer 15 [20%]; Test Engineer 2 [20%] | 7.2h |
| 39 | 1.5.6 | Rework | 0.46d | 2023-04-25 | 2023-04-25 | 38 | 0d | System Engineer 14 [20%]; System Engineer 15 [20%]; System Engineer 16 [20%] | 2.21h |
| 40 | 1.6 | **Coding and unit test** | 151.69d | 2023-04-25 | 2023-11-23 |  | 0d |  | 1206.72h |
| 41 | 1.6.1 | Write Code | 127.5d | 2023-04-25 | 2023-10-20 | 39 | 0d | Programmer 3 [20%]; Programmer 1 [20%]; Programmer 4 [20%]; Programmer 5 [20%]; Programmer 6 [20%] | 1020h |
| 42 | 1.6.2 | **Unit Testing** | 15.93d | 2023-10-20 | 2023-11-13 |  | 0d |  | 127.44h |
| 43 | 1.6.2.1 | Prepare/Execute Test Cases | 6.48d | 2023-10-20 | 2023-10-30 | 41 | 0d | Programmer 3 [20%]; Programmer 1 [20%]; Programmer 4 [20%]; Programmer 5 [20%]; Programmer 6 [20%] | 51.84h |
| 44 | 1.6.2.2 | Fix Found Defects | 5.25d | 2023-10-30 | 2023-11-07 | 43 | 0d | Programmer 3 [20%]; Programmer 1 [20%]; Programmer 4 [20%]; Programmer 5 [20%]; Programmer 6 [20%] | 42h |
| 45 | 1.6.2.3 | Test Found Defects | 4.2d | 2023-11-07 | 2023-11-13 | 44 | 0d | Programmer 3 [20%]; Programmer 1 [20%]; Programmer 4 [20%]; Programmer 5 [20%]; Programmer 6 [20%] | 33.6h |
| 46 | 1.6.3 | **Code Inspection** | 8.26d | 2023-11-13 | 2023-11-23 |  | 0d |  | 59.28h |
| 47 | 1.6.3.1 | Preparation for Code Inspection | 4.25d | 2023-11-13 | 2023-11-17 | 45 | 0d | Programmer 22 [20%]; Programmer 23 [20%]; Programmer 24 [20%]; Programmer 25 [20%] | 27.2h |
| 48 | 1.6.3.2 | Code Inspection Meeting | 3.18d | 2023-11-17 | 2023-11-22 | 47 | 0d | Programmer 3 [20%]; Programmer 22 [20%]; Programmer 23 [20%]; Programmer 24 [20%]; Programmer 25 [20%] | 25.44h |
| 49 | 1.6.3.3 | Rework | 0.83d | 2023-11-22 | 2023-11-23 | 48 | 0d | Programmer 3 [20%]; Programmer 1 [20%]; Programmer 4 [20%]; Programmer 5 [20%]; Programmer 6 [20%] | 6.64h |

| ID | WBS | Task | Duration | Start | Finish | Predecessors | Total slack | Free slack | Resources | Work |
| --- | --- | --- | --- | --- | --- | --- | --- | --- | --- | --- |
| 50 | 1.7 | **Testing** | 208.29d | 2023-03-02 | 2023-12-20 |  | 0d |  |  | 252.8h |
| 51 | 1.7.1 | Write test plan (TP) | 8.16d | 2023-03-02 | 2023-03-15 | 22 | 191.38d | 0d | Test Engineer 2 [20%]; Test Engineer 3 [20%]; Test Engineer 7 [20%]; Test Engineer 8 [20%]; Test Engineer 16 [20%] | 65.28h |
| 52 | 1.7.2 | **Review TP** | 8.75d | 2023-03-15 | 2023-03-27 |  | 191.38d |  |  | 56h |
| 53 | 1.7.2.1 | Preparation for TP | 5.1d | 2023-03-15 | 2023-03-22 | 51 | 191.38d | 0d | Documentation Engineer 13 [20%]; Programmer 23 [20%]; System Engineer 14 [20%]; Test Engineer 7 [20%] | 32.64h |
| 54 | 1.7.2.2 | Review TP Meeting | 2.55d | 2023-03-22 | 2023-03-24 | 53 | 191.38d | 0d | Documentation Engineer 13 [20%]; Programmer 23 [20%]; Test Engineer 7 [20%]; System Engineer 14 [20%] | 16.32h |
| 55 | 1.7.2.3 | Rework | 1.1d | 2023-03-24 | 2023-03-27 | 54 | 191.38d |  | Test Engineer 2 [20%]; Test Engineer 3 [20%]; Test Engineer 7 [20%]; Test Engineer 8 [20%] | 7.04h |
| 56 | 1.7.3 | Execute TP (test cases) | 6.45d | 2023-11-23 | 2023-12-04 | 49 | 0d |  | Test Engineer 2 [20%]; Test Engineer 3 [20%]; Test Engineer 7 [20%]; Test Engineer 8 [20%] | 41.28h |
| 57 | 1.7.4 | Fix Found Defects | 7.52d | 2023-12-04 | 2023-12-13 | 56 | 0d |  | Programmer 3 [20%]; Programmer 1 [20%]; Programmer 4 [20%]; Programmer 5 [20%]; Programmer 6 [20%] | 60.16h |
| 58 | 1.7.5 | Test Fixed Defects | 4.7d | 2023-12-13 | 2023-12-20 | 57 | 0d |  | Test Engineer 2 [20%]; Test Engineer 3 [20%]; Test Engineer 7 [20%]; Test Engineer 8 [20%] | 30.08h |
| 59 | 1.8 | **Documentation** | 6.87d | 2023-03-02 | 2023-03-13 |  | 201.42d |  |  | 44.62h |
| 60 | 1.8.1 | User Documentation | 1.73d | 2023-03-02 | 2023-03-06 | 22 | 201.42d | 0d | Documentation Engineer 14 [20%]; Documentation Engineer 43 [20%]; Documentation Engineer 44 [20%]; Documentation Engineer 45 [20%] | 11.07h |
| 61 | 1.8.2 | **Review UD** | 5.14d | 2023-03-06 | 2023-03-13 |  | 201.42d |  |  | 33.55h |
| 62 | 1.8.2.1 | Preparation for UD Review | 4.17d | 2023-03-06 | 2023-03-10 | 60 | 201.42d | 0d | Documentation Engineer 13 [20%]; Programmer 22 [20%]; Requirement Engineers 13 [20%]; Test Engineer 48 [20%] | 26.69h |
| 63 | 1.8.2.2 | Review UD Meeting | 0.41d | 2023-03-10 | 2023-03-13 | 62 | 201.42d | 0d | Documentation Engineer 13 [20%]; Programmer 22 [20%]; Requirement Engineers 13 [20%]; Test Engineer 48 [20%]; Documentation Engineer 14 [20%] | 3.28h |
| 64 | 1.8.2.3 | Rework | 0.56d | 2023-03-13 | 2023-03-13 | 63 | 201.42d |  | Documentation Engineer 14 [20%]; Documentation Engineer 43 [20%]; Documentation Engineer 44 [20%]; Documentation Engineer 45 [20%] | 3.58h |
