Schedule from MS Project, 2023-02-06 to 2023-07-10.

## Calendars

- Standard: Mon-Fri 08:00-12:00, 13:00-17:00; Sat-Sun off.

## Resources

| Resource |
| --- |
| Project Manager 1 |
| Project Manager 2 |
| Project Manager 3 |
| Requirement Engineer1 |
| Requirement Engineers 2 |
| Requirement Engineers 3 |
| Requirement Engineers 7 |
| Requirement Engineers 8 |
| Requirement Engineers 9 |
| Requirement Engineers 10 |
| Requirement Engineers 13 |
| Requirement Engineers 14 |
| Requirement Engineers 15 |
| System Engineer 9 |
| System Engineer 11 |
| System Engineer 12 |
| System Engineer 13 |
| System Engineer 14 |
| System Engineer 15 |
| System Engineer 16 |
| Programmer 1 |
| Programmer 3 |
| Programmer 4 |
| Programmer 5 |
| Programmer 6 |
| Programmer 23 |
| Programmer 24 |
| Programmer 25 |
| Programmer 26 |
| Programmer 22 |
| Test Engineer 2 |
| Test Engineer 3 |
| Test Engineer 7 |
| Test Engineer 8 |
| Test Engineer 14 |
| Test Engineer 15 |
| Test Engineer 16 |
| Test Engineer 27 |
| Test Engineer 48 |
| Test Engineer 49 |
| Documentation Engineer 7 |
| Documentation Engineer 8 |
| Documentation Engineer 13 |
| Documentation Engineer 14 |
| Documentation Engineer 43 |
| Documentation Engineer 44 |
| Documentation Engineer 45 |
| Documentation Engineer 60 |
| Requirement Engineer 70 |
| Requirement Engineer 71 |
| Requirement Engineer 72 |
| System Engineer 30 |
| System Engineer 31 |
| System Engineer 32 |
| Programmer 58 |
| Programmer 59 |
| Programmer 65 |
| Test Engineer 80 |
| Test Engineer 81 |
| Documentation Engineer 82 |
| Documentation Engineer 63 |
| Project Manager 10 |
| Project Manager 11 |

## Schedule

| ID | WBS | Task | Duration | Start | Finish | Predecessors | Total slack | Free slack | Resources | Work |
| --- | --- | --- | --- | --- | --- | --- | --- | --- | --- | --- |
| 1 | 1 | **Project 1** | 110.72d | 2023-02-06 | 2023-07-10 |  | 0d |  |  | 4876.27h |
| 2 | 1.1 | **Project Plan** | 5.65d | 2023-02-06 | 2023-02-13 |  | 100.7d |  |  | 118.84h |
| 3 | 1.1.1 | Write Plan | 3.25d | 2023-02-06 | 2023-02-09 |  | 101.19d | 0d | Project Manager 1 | 26h |
| 4 | 1.1.2 | **Review Plan** | 2.17d | 2023-02-09 | 2023-02-13 |  | 100.7d |  |  | 91h |
| 5 | 1.1.2.1 | Preparation for review | 1.62d | 2023-02-09 | 2023-02-10 | 3 | 100.7d | 0d | Requirement Engineer1; System Engineer 9; Test Engineer 2; Programmer 1; Documentation Engineer 7 | 65h |
| 6 | 1.1.2.2 | Review Meeting | 0.54d | 2023-02-10 | 2023-02-13 | 5 | 100.7d | 0d | Programmer 1; Requirement Engineer1; System Engineer 9; Test Engineer 2; Project Manager 1; Documentation Engineer 7 | 26h |
| 7 | 1.1.3 | Rework | 0.23d | 2023-02-13 | 2023-02-13 | 6 | 100.7d | 0d | Project Manager 1 | 1.84h |
| 8 | 1.2 | **Risk Mitigation and Contingency Plan** | 4.37d | 2023-02-13 | 2023-02-20 |  | 100.7d |  |  | 83.99h |
| 9 | 1.2.1 | Write Plan | 1.93d | 2023-02-13 | 2023-02-15 | 7 | 100.7d | 0d | Project Manager 1 | 15.44h |
| 10 | 1.2.2 | **Review Plan** | 1.42d | 2023-02-15 | 2023-02-16 |  | 100.7d |  |  | 60.39h |
| 11 | 1.2.2.1 | Preparation for review | 0.96d | 2023-02-15 | 2023-02-16 | 9 | 100.7d | 0d | Programmer 1; Requirement Engineer1; System Engineer 9; Test Engineer 2; Documentation Engineer 7 | 38.5h |
| 12 | 1.2.2.2 | Review Meeting | 0.46d | 2023-02-16 | 2023-02-16 | 11 | 100.7d | 0d | Programmer 1; Project Manager 1; Requirement Engineer1; System Engineer 9; Test Engineer 2; Documentation Engineer 7 | 21.89h |
| 13 | 1.2.3 | Rework | 1.02d | 2023-02-16 | 2023-02-20 | 12 | 100.7d |  | Project Manager 1 | 8.16h |
| 14 | 1.3 | **Requirement** | 11.11d | 2023-02-06 | 2023-02-21 |  | 0d |  |  | 378.56h |
| 15 | 1.3.1 | Write requirements | 1.82d | 2023-02-06 | 2023-02-07 |  | 0d |  | Requirement Engineers 2; Requirement Engineers 7; Requirement Engineers 8; Requirement Engineers 3 | 58.24h |
| 16 | 1.3.2 | Write Use Case Model | 4.93d | 2023-02-07 | 2023-02-14 | 15 | 0d |  | Requirement Engineers 3; Requirement Engineers 7; Requirement Engineers 8; Requirement Engineers 9 | 157.76h |
| 17 | 1.3.3 | **Review Requirements/ Use Case Model** | 7.88d | 2023-02-07 | 2023-02-17 |  | 4.93d |  |  | 140h |
| 18 | 1.3.3.1 | Preparation for review- requirement | 0.58d | 2023-02-07 | 2023-02-08 | 15 | 107.84d | 0d | Documentation Engineer 8; Programmer 3; System Engineer 11; Test Engineer 3 | 18.56h |
| 19 | 1.3.3.2 | Preparation for review- Use case | 1.97d | 2023-02-14 | 2023-02-16 | 16 | 0d |  | Documentation Engineer 8; Programmer 3; System Engineer 11; Test Engineer 3 | 63.04h |
| 20 | 1.3.3.3 | Review Meeting - requirement | 0.48d | 2023-02-08 | 2023-02-08 | 18 | 107.84d |  | Documentation Engineer 8; Programmer 3; Requirement Engineers 2; System Engineer 11; Test Engineer 3 | 19.2h |
| 21 | 1.3.3.4 | Review Meeting - use case | 0.98d | 2023-02-16 | 2023-02-17 | 19 | 0d |  | Documentation Engineer 8; Programmer 3; System Engineer 11; Test Engineer 3; Requirement Engineers 7 | 39.2h |
| 22 | 1.3.4 | Rework | 1.41d | 2023-02-17 | 2023-02-21 | 21 | 0d |  | Requirement Engineers 3; Requirement Engineers 7 | 22.56h |
| 23 | 1.4 | **Analysis** | 7.62d | 2023-02-21 | 2023-03-02 |  | 0d |  |  | 220.48h |
| 24 | 1.4.1 | Write Analysis Document | 1.76d | 2023-02-21 | 2023-02-22 | 22 | 0d |  | System Engineer 11; System Engineer 9 | 28.16h |

| ID | WBS | Task | Duration | Start | Finish | Predecessors | Total slack | Resources | Work |
| --- | --- | --- | --- | --- | --- | --- | --- | --- | --- |
| 25 | 1.4.2 | **Review Analysis Document** | 5.28d | 2023-02-22 | 2023-03-02 |  | 0d |  | 183.04h |
| 26 | 1.4.2.1 | Preparation for Analysis Document | 3.52d | 2023-02-22 | 2023-02-28 | 24 | 0d | Documentation Engineer 7; Programmer 1; Requirement Engineer1; Test Engineer 49 | 112.64h |
| 27 | 1.4.2.2 | Review Meeting | 1.76d | 2023-02-28 | 2023-03-02 | 26 | 0d | Documentation Engineer 7; Programmer 1; Requirement Engineer1; System Engineer 11; Test Engineer 49 | 70.4h |
| 28 | 1.4.3 | Rework | 0.58d | 2023-03-02 | 2023-03-02 | 27 | 0d | System Engineer 9; System Engineer 11 | 9.28h |
| 29 | 1.5 | **Design** | 23.63d | 2023-03-02 | 2023-04-05 |  | 0d |  | 633.68h |
| 30 | 1.5.1 | Write DD | 3.93d | 2023-03-02 | 2023-03-08 | 28 | 0d | System Engineer 9; System Engineer 11 | 62.88h |
| 31 | 1.5.2 | **Review DD** | 7.67d | 2023-03-08 | 2023-03-20 |  | 0d |  | 269.04h |
| 32 | 1.5.2.1 | Preparation for DD | 4.72d | 2023-03-08 | 2023-03-15 | 30 | 0d | Documentation Engineer 7; Programmer 1; Requirement Engineers 10; Test Engineer 15 | 151.04h |
| 33 | 1.5.2.2 | Review Meeting | 2.95d | 2023-03-15 | 2023-03-20 | 32 | 0d | Documentation Engineer 7; Programmer 1; System Engineer 11; Requirement Engineers 10; Test Engineer 15 | 118h |
| 34 | 1.5.3 | Rework | 1.67d | 2023-03-20 | 2023-03-21 | 33 | 0d | System Engineer 9; System Engineer 11 | 26.72h |
| 35 | 1.5.4 | Write Data Model (DM) | 7.5d | 2023-03-22 | 2023-03-31 | 34 | 0d | System Engineer 14; System Engineer 15; System Engineer 16 | 180h |
| 36 | 1.5.5 | **Review DM** | 2.4d | 2023-03-31 | 2023-04-04 |  | 0d |  | 84h |
| 37 | 1.5.5.1 | Preparation for DM | 1.5d | 2023-03-31 | 2023-04-03 | 35 | 0d | Documentation Engineer 7; Programmer 1; Requirement Engineer1; Test Engineer 2 | 48h |
| 38 | 1.5.5.2 | Review Meeting | 0.9d | 2023-04-04 | 2023-04-04 | 37 | 0d | Documentation Engineer 7; Programmer 1; Requirement Engineer1; System Engineer 15; Test Engineer 2 | 36h |
| 39 | 1.5.6 | Rework | 0.46d | 2023-04-04 | 2023-04-05 | 38 | 0d | System Engineer 14; System Engineer 15; System Engineer 16 | 11.04h |
| 40 | 1.6 | **Coding and unit test** | 49.69d | 2023-04-05 | 2023-06-14 |  | 0d |  | 1953.6h |
| 41 | 1.6.1 | Write Code | 25.5d | 2023-04-05 | 2023-05-10 | 39 | 0d | Programmer 3; Programmer 1; Programmer 4; Programmer 5; Programmer 6 | 1020h |
| 42 | 1.6.2 | **Unit Testing** | 15.93d | 2023-05-10 | 2023-06-01 |  | 0d |  | 637.2h |
| 43 | 1.6.2.1 | Prepare/Execute Test Cases | 6.48d | 2023-05-10 | 2023-05-19 | 41 | 0d | Programmer 3; Programmer 1; Programmer 4; Programmer 5; Programmer 6 | 259.2h |
| 44 | 1.6.2.2 | Fix Found Defects | 5.25d | 2023-05-19 | 2023-05-26 | 43 | 0d | Programmer 3; Programmer 1; Programmer 4; Programmer 5; Programmer 6 | 210h |
| 45 | 1.6.2.3 | Test Found Defects | 4.2d | 2023-05-26 | 2023-06-01 | 44 | 0d | Programmer 3; Programmer 1; Programmer 4; Programmer 5; Programmer 6 | 168h |
| 46 | 1.6.3 | **Code Inspection** | 8.26d | 2023-06-01 | 2023-06-14 |  | 0d |  | 296.4h |
| 47 | 1.6.3.1 | Preparation for Code Inspection | 4.25d | 2023-06-01 | 2023-06-08 | 45 | 0d | Programmer 22; Programmer 23; Programmer 24; Programmer 25 | 136h |
| 48 | 1.6.3.2 | Code Inspection Meeting | 3.18d | 2023-06-08 | 2023-06-13 | 47 | 0d | Programmer 3; Programmer 22; Programmer 23; Programmer 24; Programmer 25 | 127.2h |
| 49 | 1.6.3.3 | Rework | 0.83d | 2023-06-13 | 2023-06-14 | 48 | 0d | Programmer 3; Programmer 1; Programmer 4; Programmer 5; Programmer 6 | 33.2h |

| ID | WBS | Task | Duration | Start | Finish | Predecessors | Total slack | Free slack | Resources | Work |
| --- | --- | --- | --- | --- | --- | --- | --- | --- | --- | --- |
| 50 | 1.7 | **Testing** | 99.61d | 2023-02-21 | 2023-07-10 |  | 0d |  |  | 1264h |
| 51 | 1.7.1 | Write test plan (TP) | 8.16d | 2023-02-21 | 2023-03-03 | 22 | 82.7d | 0d | Test Engineer 2; Test Engineer 3; Test Engineer 7; Test Engineer 8; Test Engineer 16 | 326.4h |
| 52 | 1.7.2 | **Review TP** | 8.75d | 2023-03-03 | 2023-03-16 |  | 82.7d |  |  | 280h |
| 53 | 1.7.2.1 | Preparation for TP | 5.1d | 2023-03-03 | 2023-03-10 | 51 | 82.7d | 0d | Documentation Engineer 13; Programmer 23; System Engineer 14; Test Engineer 7 | 163.2h |
| 54 | 1.7.2.2 | Review TP Meeting | 2.55d | 2023-03-10 | 2023-03-14 | 53 | 82.7d | 0d | Documentation Engineer 13; Programmer 23; Test Engineer 7; System Engineer 14 | 81.6h |
| 55 | 1.7.2.3 | Rework | 1.1d | 2023-03-14 | 2023-03-16 | 54 | 82.7d |  | Test Engineer 2; Test Engineer 3; Test Engineer 7; Test Engineer 8 | 35.2h |
| 56 | 1.7.3 | Execute TP (test cases) | 6.45d | 2023-06-14 | 2023-06-22 | 49 | 0d |  | Test Engineer 2; Test Engineer 3; Test Engineer 7; Test Engineer 8 | 206.4h |
| 57 | 1.7.4 | Fix Found Defects | 7.52d | 2023-06-22 | 2023-07-04 | 56 | 0d |  | Programmer 3; Programmer 1; Programmer 4; Programmer 5; Programmer 6 | 300.8h |
| 58 | 1.7.5 | Test Fixed Defects | 4.7d | 2023-07-04 | 2023-07-10 | 57 | 0d |  | Test Engineer 2; Test Engineer 3; Test Engineer 7; Test Engineer 8 | 150.4h |
| 59 | 1.8 | **Documentation** | 6.87d | 2023-02-21 | 2023-03-01 |  | 92.74d |  |  | 223.12h |
| 60 | 1.8.1 | User Documentation | 1.73d | 2023-02-21 | 2023-02-22 | 22 | 92.74d | 0d | Documentation Engineer 14; Documentation Engineer 43; Documentation Engineer 44; Documentation Engineer 45 | 55.36h |
| 61 | 1.8.2 | **Review UD** | 5.14d | 2023-02-22 | 2023-03-01 |  | 92.74d |  |  | 167.76h |
| 62 | 1.8.2.1 | Preparation for UD Review | 4.17d | 2023-02-22 | 2023-03-01 | 60 | 92.74d | 0d | Documentation Engineer 13; Programmer 22; Requirement Engineers 13; Test Engineer 48 | 133.44h |
| 63 | 1.8.2.2 | Review UD Meeting | 0.41d | 2023-03-01 | 2023-03-01 | 62 | 92.74d | 0d | Documentation Engineer 13; Programmer 22; Requirement Engineers 13; Test Engineer 48; Documentation Engineer 14 | 16.4h |
| 64 | 1.8.2.3 | Rework | 0.56d | 2023-03-01 | 2023-03-01 | 63 | 92.74d |  | Documentation Engineer 14; Documentation Engineer 43; Documentation Engineer 44; Documentation Engineer 45 | 17.92h |
