Schedule from MS Project, 2023-03-06 to 2023-11-22.

## Calendars

- Standard: Mon-Fri 08:00-12:00, 13:00-17:00; Sat-Sun off.

## Resources

| Resource |
| --- |
| Project Manager 3 |
| Project Manager 10 |
| Requirement Engineer1 |
| Requirement Engineers 2 |
| Requirement Engineers 3 |
| Requirement Engineers 7 |
| Requirement Engineers 8 |
| Requirement Engineers 15 |
| Requirement Engineer 70 |
| System Engineer 9 |
| System Engineer 16 |
| System Engineer 31 |
| System Engineer 32 |
| System Engineer 380 |
| System Engineer 381 |
| System Engineer 382 |
| Programmer 1 |
| Programmer 3 |
| Programmer 4 |
| Programmer 5 |
| Programmer 24 |
| Programmer 65 |
| Programmer 377 |
| Programmer 378 |
| Programmer 379 |
| Programmer 380 |
| Programmer 381 |
| Test Engineer 27 |
| Test Engineer 49 |
| Test Engineer 80 |
| Test Engineer 81 |
| Test Engineer 381 |
| Test Engineer 382 |
| Test Engineer 384 |
| Test Engineer 385 |
| Test Engineer 386 |
| Documentation Engineer 7 |
| Documentation Engineer 14 |
| Documentation Engineer 45 |
| Documentation Engineer 60 |
| Documentation Engineer 377 |
| Documentation Engineer 378 |
| Documentation Engineer 379 |
| Documentation Engineer 380 |
| Documentation Engineer 381 |
| Documentation Engineer 382 |

## Schedule

| ID | WBS | Task | Duration | Start | Finish | Predecessors | Total slack | Free slack | Resources | Work |
| --- | --- | --- | --- | --- | --- | --- | --- | --- | --- | --- |
| 1 | 1 | **Project_3** | 187.8d | 2023-03-06 | 2023-11-22 |  | 0d |  |  | 10792.2h |
| 2 | 1.1 | **Project Plan** | 15.99d | 2023-03-06 | 2023-03-27 |  | 115.67d |  |  | 364.32h |
| 3 | 1.1.1 | Write Plan | 7.58d | 2023-03-06 | 2023-03-15 |  | 115.67d | 0d | Project Manager 10 | 60.64h |
| 4 | 1.1.2 | **Review Plan** | 6.82d | 2023-03-15 | 2023-03-24 |  | 115.67d |  |  | 290.96h |
| 5 | 1.1.2.1 | Preparation for Review | 4.55d | 2023-03-15 | 2023-03-22 | 3 | 115.67d | 0d | Documentation Engineer 377; Programmer 377; Requirement Engineer1; System Engineer 380; Test Engineer 381 | 182h |
| 6 | 1.1.2.2 | Review Meeting | 2.27d | 2023-03-22 | 2023-03-24 | 5 | 115.67d | 0d | Documentation Engineer 377; Programmer 377; Project Manager 10; Requirement Engineer1; System Engineer 380; Test Engineer 381 | 108.96h |
| 7 | 1.1.3 | Rework | 1.59d | 2023-03-24 | 2023-03-27 | 6 | 115.67d | 0d | Project Manager 10 | 12.72h |
| 8 | 1.2 | **Documented Software Development Process Updates** | 18.99d | 2023-03-06 | 2023-03-30 |  | 0d |  |  | 132h |
| 9 | 1.2.1 | Process Changes | 3d | 2023-03-27 | 2023-03-30 | 7 | 168.81d |  | Documentation Engineer 14 | 24h |
| 10 | 1.2.2 | **Review Changes** | 2.7d | 2023-03-06 | 2023-03-08 |  | 185.1d |  |  | 97.6h |
| 11 | 1.2.2.1 | Preparation for Review | 1.8d | 2023-03-06 | 2023-03-07 |  | 186d |  | System Engineer 381; Documentation Engineer 379; Documentation Engineer 380; Test Engineer 385 | 57.6h |
| 12 | 1.2.2.2 | Review Meeting | 1.4d | 2023-03-07 | 2023-03-08 |  | 185.1d |  | System Engineer 381; Documentation Engineer 379; Test Engineer 385; Documentation Engineer 380; Documentation Engineer 14 | 40h |
| 13 | 1.2.3 | Rework | 1.3d | 2023-03-06 | 2023-03-07 |  | 0d |  | Documentation Engineer 14 | 10.4h |
| 14 | 1.3 | **Requirement** | 34.84d | 2023-03-07 | 2023-04-25 |  | 0d |  |  | 1052.4h |
| 15 | 1.3.1 | Write Requirements | 4.92d | 2023-03-07 | 2023-03-14 | 13 | 0d |  | Requirement Engineers 2; Requirement Engineers 3; Requirement Engineers 7; Requirement Engineers 8 | 157.44h |
| 16 | 1.3.2 | Write Use Case Model | 14.81d | 2023-03-14 | 2023-04-04 | 15 | 0d |  | Requirement Engineers 3; Requirement Engineers 7; Requirement Engineers 8; Requirement Engineers 2 | 474h |
| 17 | 1.3.3 | **Review Requirements** | 15.11d | 2023-04-04 | 2023-04-25 |  | 0d |  |  | 284.32h |
| 18 | 1.3.3.1 | Preparation for review -requirements | 1.64d | 2023-04-04 | 2023-04-05 | 16 | 0d |  | Test Engineer 49; Documentation Engineer 45; System Engineer 380; Programmer 65 | 52.48h |
| 19 | 1.3.3.2 | Preparation for review - Use Case | 3.52d | 2023-04-05 | 2023-04-11 | 18 | 0d |  | Test Engineer 49; Documentation Engineer 45; System Engineer 380; Programmer 65 | 112.64h |
| 20 | 1.3.3.3 | Review Meeting- Requirement | 6.55d | 2023-04-12 | 2023-04-25 | 18 | 151.66d |  | Test Engineer 49; Documentation Engineer 45; System Engineer 380; Programmer 65 | 62.88h |
| 21 | 1.3.3.4 | Review Meeting - use case | 1.76d | 2023-04-11 | 2023-04-12 | 19 | 0d |  | Programmer 65; Documentation Engineer 45; System Engineer 380; Test Engineer 49 | 56.32h |
| 22 | 1.3.4 | Rework | 4.27d | 2023-04-12 | 2023-04-19 | 21 | 0d |  | Requirement Engineers 2; Requirement Engineers 3; Requirement Engineers 7; Requirement Engineers 8 | 136.64h |
| 23 | 1.4 | **Build the development and testing lab environment** | 56.15d | 2023-03-27 | 2023-06-14 |  | 115.67d |  |  | 948h |
| 24 | 1.4.1 | **Hardware Environment** | 26.52d | 2023-03-27 | 2023-05-03 |  | 115.67d |  |  | 546h |
| 25 | 1.4.1.1 | Servers | 17.01d | 2023-03-27 | 2023-04-19 | 7 | 115.67d | 0d | System Engineer 380; System Engineer 381; System Engineer 382; System Engineer 9 | 360h |
| 26 | 1.4.1.2 | Clients | 7.9d | 2023-04-19 | 2023-05-03 | 25 | 115.67d | 0d | System Engineer 9; System Engineer 380; System Engineer 381; System Engineer 382 | 186h |

| ID | WBS | Task | Duration | Start | Finish | Predecessors | Total slack | Free slack | Resources | Work |
| --- | --- | --- | --- | --- | --- | --- | --- | --- | --- | --- |
| 27 | 1.4.2 | **Software Development Tools** | 1.5d | 2023-05-03 | 2023-05-05 |  | 115.67d |  |  | 30h |
| 28 | 1.4.2.1 | Build/compile tools | 1.5d | 2023-05-03 | 2023-05-05 | 26 | 115.67d | 0d | System Engineer 380; System Engineer 381; System Engineer 382; System Engineer 9 | 30h |
| 29 | 1.4.3 | **Software Testing Tools** | 28.12d | 2023-05-05 | 2023-06-14 |  | 115.67d |  |  | 372h |
| 30 | 1.4.3.1 | Test Cases Execution tools | 4.74d | 2023-05-18 | 2023-06-14 | 28 | 115.67d |  | System Engineer 380; System Engineer 381; System Engineer 382; System Engineer 9 | 84h |
| 31 | 1.4.3.2 | Simulation Tools | 15.34d | 2023-05-05 | 2023-05-30 | 28 | 125.83d |  | System Engineer 380; System Engineer 381; System Engineer 382; System Engineer 9 | 288h |
| 32 | 1.5 | **Analysis** | 7.96d | 2023-04-19 | 2023-05-01 |  | 0d |  |  | 197.2h |
| 33 | 1.5.1 | Write Analysis Document | 3.48d | 2023-04-19 | 2023-04-25 | 22 | 0d |  | System Engineer 380; System Engineer 381; System Engineer 382; System Engineer 9 | 55.68h |
| 34 | 1.5.2 | **Review Analysis Document** | 4.13d | 2023-04-25 | 2023-05-01 |  | 0d |  |  | 141.52h |
| 35 | 1.5.2.1 | Preparation for Analysis Document | 2.32d | 2023-04-25 | 2023-04-27 | 33 | 0d |  | Documentation Engineer 377; Documentation Engineer 378; Test Engineer 381; Test Engineer 382 | 74.24h |
| 36 | 1.5.2.2 | Review Meeting | 1.16d | 2023-04-27 | 2023-04-28 | 35 | 0d |  | Documentation Engineer 377; Documentation Engineer 378; Test Engineer 381; Test Engineer 382; System Engineer 9 | 46.4h |
| 37 | 1.5.2.3 | Rework | 0.65d | 2023-04-28 | 2023-05-01 | 36 | 0d |  | System Engineer 380; System Engineer 381; System Engineer 382; System Engineer 9 | 20.88h |
| 38 | 1.6 | **Design** | 50.41d | 2023-05-01 | 2023-07-10 |  | 0d |  |  | 1681.68h |
| 39 | 1.6.1 | Write DD | 5.8d | 2023-05-01 | 2023-05-08 | 37 | 0d |  | Documentation Engineer 378; Documentation Engineer 379; Documentation Engineer 380; Documentation Engineer 381; Documentation Engineer 382 | 220h |
| 40 | 1.6.2 | **Review DD** | 5.13d | 2023-05-08 | 2023-05-16 |  | 0d |  |  | 178.8h |
| 41 | 1.6.2.1 | Preparation for DD | 3.3d | 2023-05-08 | 2023-05-12 | 39 | 0d |  | Programmer 381; Requirement Engineers 15; System Engineer 382; Test Engineer 386 | 105.6h |
| 42 | 1.6.2.2 | Review Meeting | 1.83d | 2023-05-12 | 2023-05-16 | 41 | 0d |  | Documentation Engineer 382; Programmer 381; Requirement Engineers 15; System Engineer 382; Test Engineer 386 | 73.2h |
| 43 | 1.6.3 | Rework | 2.46d | 2023-05-16 | 2023-05-18 | 42 | 0d |  | Documentation Engineer 379; Documentation Engineer 380; Documentation Engineer 381; Documentation Engineer 382; Documentation Engineer 378 | 98.24h |
| 44 | 1.6.4 | Write Data Model (DM) | 16.5d | 2023-05-18 | 2023-06-12 | 43 | 97.21d | 0d | System Engineer 31; System Engineer 32; System Engineer 380; System Engineer 381 | 528h |
| 45 | 1.6.5 | **Review DM** | 20.52d | 2023-06-12 | 2023-07-10 |  | 97.21d |  |  | 656.64h |
| 46 | 1.6.5.1 | Preparation for DM | 4.12d | 2023-06-12 | 2023-06-16 | 44 | 97.21d | 0d | Documentation Engineer 382; Project Manager 3; Requirement Engineers 15; Test Engineer 386 | 131.84h |
| 47 | 1.6.5.2 | Review Meeting | 2.06d | 2023-06-16 | 2023-06-20 | 46 | 97.21d | 0d | Documentation Engineer 382; Project Manager 3; Requirement Engineers 15; Test Engineer 386 | 65.92h |
| 48 | 1.6.5.3 | Rework | 14.34d | 2023-06-20 | 2023-07-10 | 47 | 97.21d |  | System Engineer 32; System Engineer 380; System Engineer 381; System Engineer 31 | 458.88h |
| 49 | 1.7 | **Coding** | 115.14d | 2023-05-18 | 2023-10-26 |  | 0d |  |  | 4466.96h |
| 50 | 1.7.1 | Write Code | 82d | 2023-05-18 | 2023-09-11 | 43 | 0d |  | Programmer 377; Programmer 378; Programmer 379; Programmer 380; Programmer 381 | 3280h |

| ID | WBS | Task | Duration | Start | Finish | Predecessors | Total slack | Free slack | Resources | Work |
| --- | --- | --- | --- | --- | --- | --- | --- | --- | --- | --- |
| 51 | 1.7.2 | **Unit Testing** | 19.17d | 2023-09-11 | 2023-10-06 |  | 0d |  |  | 660.72h |
| 52 | 1.7.2.1 | Prepare/Execute Test Cases | 5.93d | 2023-09-11 | 2023-09-19 | 50 | 0d |  | Programmer 378; Programmer 379; Programmer 380; Programmer 381; Programmer 377 | 237.12h |
| 53 | 1.7.2.2 | Fix Found Defects | 2.81d | 2023-09-19 | 2023-09-22 | 52 | 0d |  | Programmer 378; Programmer 379; Programmer 380; Programmer 377 | 90h |
| 54 | 1.7.2.3 | Test Fixed Defects | 10.43d | 2023-09-22 | 2023-10-06 | 53 | 0d |  | Programmer 379; Programmer 380; Programmer 381; Programmer 378 | 333.6h |
| 55 | 1.7.3 | **Code Inspection** | 13.98d | 2023-10-06 | 2023-10-26 |  | 0d |  |  | 526.24h |
| 56 | 1.7.3.1 | Preparation for Code Inspection | 4.1d | 2023-10-06 | 2023-10-12 | 54 | 0d |  | Programmer 3; Programmer 1; Programmer 4; Programmer 5 | 131.2h |
| 57 | 1.7.3.2 | Code Inspection Meeting | 2.9d | 2023-10-12 | 2023-10-17 | 56 | 0d |  | Programmer 3; Programmer 1; Programmer 4; Programmer 5; Programmer 381 | 116h |
| 58 | 1.7.3.3 | Rework | 6.98d | 2023-10-17 | 2023-10-26 | 57 | 0d |  | Programmer 378; Programmer 379; Programmer 380; Programmer 381; Programmer 377 | 279.04h |
| 59 | 1.8 | **Testing** | 155.58d | 2023-04-19 | 2023-11-22 |  | 0d |  |  | 1584.64h |
| 60 | 1.8.1 | Write Test Plan (TP) | 14.5d | 2023-04-19 | 2023-05-09 | 22 | 132.78d | 0d | Test Engineer 384; Test Engineer 385; Test Engineer 80; Test Engineer 81; Test Engineer 27 | 579.84h |
| 61 | 1.8.2 | **Review TP** | 8.3d | 2023-05-09 | 2023-05-22 |  | 132.78d |  |  | 281.28h |
| 62 | 1.8.2.1 | Preparation for TP | 4.53d | 2023-05-09 | 2023-05-16 | 60 | 132.78d | 0d | Documentation Engineer 45; Requirement Engineer 70; System Engineer 9; Documentation Engineer 60 | 144.96h |
| 63 | 1.8.2.2 | Review TP Meeting | 1.81d | 2023-05-16 | 2023-05-18 | 62 | 132.78d | 0d | Documentation Engineer 45; Requirement Engineer 70; Documentation Engineer 60; System Engineer 9 | 57.92h |
| 64 | 1.8.2.3 | Rework | 1.96d | 2023-05-18 | 2023-05-22 | 63 | 132.78d |  | Test Engineer 80; Test Engineer 81; Test Engineer 385; Test Engineer 384; Test Engineer 27 | 78.4h |
| 65 | 1.8.3 | Execute TP (test cases) | 10.5d | 2023-10-26 | 2023-11-10 | 58 | 0d |  | Test Engineer 27; Test Engineer 80; Test Engineer 81; Test Engineer 384; Test Engineer 385 | 420h |
| 66 | 1.8.4 | Fix Found Defects | 5.03d | 2023-11-10 | 2023-11-17 | 65 | 0d |  | Programmer 1; Programmer 4; Programmer 5; Programmer 3 | 160.8h |
| 67 | 1.8.5 | Test Fixed Defects | 3.57d | 2023-11-17 | 2023-11-22 | 66 | 0d |  | Test Engineer 80; Test Engineer 81; Test Engineer 384; Test Engineer 385; Test Engineer 27 | 142.72h |
| 68 | 1.9 | **Documentation** | 15.22d | 2023-04-19 | 2023-05-10 |  | 140.36d |  |  | 365.04h |
| 69 | 1.9.1 | User Documentation | 3.68d | 2023-04-19 | 2023-04-24 | 22 | 140.52d | 0d | Documentation Engineer 378; Documentation Engineer 379; Documentation Engineer 380; Documentation Engineer 381; Documentation Engineer 382 | 147.2h |
| 70 | 1.9.2 | **Review UD** | 11.54d | 2023-04-24 | 2023-05-10 |  | 140.36d |  |  | 217.84h |
| 71 | 1.9.2.1 | Preparation for UD Review | 2.95d | 2023-04-24 | 2023-04-27 | 69 | 140.52d | 0d | Documentation Engineer 7; Programmer 24; System Engineer 16; Test Engineer 386 | 94.4h |
| 72 | 1.9.2.2 | Review UD Meeting | 1.63d | 2023-04-27 | 2023-05-01 | 71 | 140.52d | 0d | Documentation Engineer 7; Programmer 24; System Engineer 16; Test Engineer 386; Documentation Engineer 382 | 65.2h |
| 73 | 1.9.2.3 | Rework | 1.76d | 2023-05-08 | 2023-05-10 | 72 | 140.36d |  | Documentation Engineer 379; Documentation Engineer 380; Documentation Engineer 381; Documentation Engineer 382; Documentation Engineer 378 | 58.24h |
